# WyvernsAssault

Schedule from MS Project, 2010-07-01 to 2010-09-04.
Carreras

## Calendars

- Estándar: Mon-Fri 09:00-13:00, 15:00-19:00; Sat 08:00-12:00, 13:00-17:00; Sun off.

## Resources

| Resource |
| --- |
| Giorgio |
| Elm |
| Javier |
| Marc |
| Jordi |
| Javi |
| Todos |

## Schedule

| ID | WBS | Task | Duration | Start | Finish | Predecessors | Total slack | Free slack | Resources | Work |
| --- | --- | --- | --- | --- | --- | --- | --- | --- | --- | --- |
| 1 | 1 | **Animación y modelado** | 42d | 2010-07-01 | 2010-08-18 |  | 5d | 0d | Elm | 608h |
| 2 | 1.1 | **Enemys** | 10d | 2010-07-01 | 2010-07-12 |  | 5d | 0d |  |  |
| 3 | 1.1.1 | Archer | 1d | 2010-07-01 | 2010-07-01 |  | 5d | 0d |  |  |
| 4 | 1.1.2 | Knight | 1d | 2010-07-02 | 2010-07-02 | 3 | 5d | 0d |  |  |
| 5 | 1.1.3 | Peasant | 1d | 2010-07-03 | 2010-07-03 | 4 | 5d | 0d |  |  |
| 6 | 1.1.4 | Soldier with Horse | 2d | 2010-07-05 | 2010-07-06 | 5 | 5d | 0d |  |  |
| 7 | 1.1.5 | Battering Ram | 2d | 2010-07-07 | 2010-07-08 | 6 | 5d | 0d |  |  |
| 8 | 1.1.6 | Cow | 1d | 2010-07-09 | 2010-07-09 | 7 | 5d | 0d |  |  |
| 9 | 1.1.7 | Woman | 2d | 2010-07-10 | 2010-07-12 | 8 | 5d |  |  |  |
| 10 | 1.2 | **Scenary objects** | 5d | 2010-07-13 | 2010-07-17 | 2 | 5d | 0d |  |  |
| 11 | 1.2.1 | Threes | 2d | 2010-07-13 | 2010-07-14 |  | 5d | 0d |  |  |
| 12 | 1.2.2 | Houses | 1d | 2010-07-15 | 2010-07-15 | 11 | 5d | 0d |  |  |
| 13 | 1.2.3 | Bridge | 2d | 2010-07-16 | 2010-07-17 | 12 | 5d |  |  |  |
| 14 | 1.3 | **Items** | 2d | 2010-07-19 | 2010-07-20 | 10 | 5d | 0d |  |  |
| 15 | 1.3.1 | Helm | 0.5d | 2010-07-19 | 2010-07-19 |  | 5d | 0d |  |  |
| 16 | 1.3.2 | Helm2 | 0.5d | 2010-07-19 | 2010-07-19 | 15 | 5d | 0d |  |  |
| 17 | 1.3.3 | Helm3 | 0.5d | 2010-07-20 | 2010-07-20 | 16 | 5d | 0d |  |  |
| 18 | 1.3.4 | Skull | 0.5d | 2010-07-20 | 2010-07-20 | 17 | 5d |  |  |  |
| 19 | 1.4 | **Wyverns** | 25d | 2010-07-21 | 2010-08-18 | 14 | 5d |  |  |  |
| 20 | 1.4.1 | Red Wyvern | 2d | 2010-07-21 | 2010-07-22 |  | 5d | 0d |  |  |
| 21 | 1.4.2 | Green Wyvern | 6d | 2010-07-23 | 2010-07-29 | 20 | 5d | 0d |  |  |
| 22 | 1.4.3 | Blue Wyvern | 6d | 2010-08-09 | 2010-08-14 | 27 | 5d | 0d |  |  |
| 23 | 1.4.4 | Yelow Wyvern | 3d | 2010-08-16 | 2010-08-18 | 22 | 5d |  |  |  |
| 24 | 1.5 | **Boss final** | 8d | 2010-07-30 | 2010-08-07 | 21 | 5d |  |  |  |
| 25 | 1.5.1 | Diseño | 2d | 2010-07-30 | 2010-07-31 |  | 5d | 0d |  |  |
| 26 | 1.5.2 | Modelado | 4d | 2010-08-02 | 2010-08-05 | 25 | 5d | 0d |  |  |
| 27 | 1.5.3 | Animación | 2d | 2010-08-06 | 2010-08-07 | 26 | 5d | 0d |  |  |
| 28 | 1.6 | Exportación animaciones | 34d | 2010-07-01 | 2010-08-09 |  | 13d |  | Javier | 272h |

| ID | WBS | Task | Duration | Start | Finish | Predecessors | Total slack | Free slack | Resources | Work |
| --- | --- | --- | --- | --- | --- | --- | --- | --- | --- | --- |
| 29 | 2 | **Cut-Scenes / Intros** | 10d | 2010-08-19 | 2010-08-30 | 1 | 5d |  |  | 136h |
| 30 | 2.1 | Introducción juego | 5d | 2010-08-19 | 2010-08-24 |  | 5d | 0d | Elm | 40h |
| 31 | 2.2 | Boss final | 5d | 2010-08-25 | 2010-08-30 | 30 | 5d |  | Elm | 40h |
| 32 | 2.3 | Vídeo presentación | 7d | 2010-08-19 | 2010-08-26 | 57 | 8d |  | Javier | 56h |
| 33 | 3 | **Escenario** | 21d | 2010-07-01 | 2010-07-24 |  | 7d | 0d | Giorgio | 168h |
| 34 | 3.1 | Poblado final del level 1.1 | 3d | 2010-07-01 | 2010-07-03 |  | 7d | 0d |  |  |
| 35 | 3.2 | Texturizaciones inacabadas | 3d | 2010-07-05 | 2010-07-07 | 34 | 7d | 0d |  |  |
| 36 | 3.3 | Creación y diseño level 1.2 | 15d | 2010-07-08 | 2010-07-24 | 35 | 7d |  |  |  |
| 37 | 4 | **GamePlay** | 48d | 2010-07-01 | 2010-08-25 |  | 0d |  | Giorgio; Javier; Jordi; Marc | 3816h |
| 38 | 4.1 | **Diseño minijuegos** | 2d | 2010-07-01 | 2010-07-02 |  | 46d |  | Jordi | 16h |
| 39 | 4.1.1 | Juego trigal | 2d | 2010-07-01 | 2010-07-02 |  | 46d |  |  |  |
| 40 | 4.2 | **Sistemas de partículas** | 13d | 2010-07-01 | 2010-07-15 |  | 14d | 0d | Javier | 144h |
| 41 | 4.2.1 | Magias | 2d | 2010-07-01 | 2010-07-02 |  | 14d | 0d |  |  |
| 42 | 4.2.2 | Proyectiles catapultas | 2d | 2010-07-03 | 2010-07-05 | 41 | 14d | 0d |  |  |
| 43 | 4.2.3 | Arqueros | 2d | 2010-07-06 | 2010-07-07 | 42 | 14d | 0d |  |  |
| 44 | 4.2.4 | Humo | 2d | 2010-07-08 | 2010-07-09 | 43 | 14d | 0d |  |  |
| 45 | 4.2.5 | Sistemas de proyectiles diversos | 5d | 2010-07-10 | 2010-07-15 | 44 | 14d |  | Javier | 40h |
| 46 | 4.3 | **Físicas / Interacción Entitys** | 28d | 2010-07-01 | 2010-08-02 |  | 0d |  | Marc | 256h |
| 47 | 4.3.1 | Físicas objetos escenario | 6d | 2010-07-01 | 2010-07-07 |  | 0d |  |  |  |
| 48 | 4.3.2 | Física propia Player | 9d | 2010-07-08 | 2010-07-17 | 47 | 0d |  |  |  |
| 49 | 4.3.3 | Player vs Enemys | 5d | 2010-07-19 | 2010-07-23 | 48 | 0d |  |  |  |
| 50 | 4.3.4 | Fisica Player vs Objetos escenario | 4d | 2010-07-24 | 2010-07-28 | 49 | 0d |  |  |  |
| 51 | 4.3.5 | Acoplamiento nuevos personajes | 4d | 2010-07-29 | 2010-08-02 | 50 | 0d |  | Marc | 32h |
| 52 | 4.4 | IA + LUA | 20d | 2010-08-03 | 2010-08-25 | 46 | 0d |  | Marc | 160h |

| ID | WBS | Task | Duration | Start | Finish | Predecessors | Total slack | Free slack | Constraint | Resources | Work |
| --- | --- | --- | --- | --- | --- | --- | --- | --- | --- | --- | --- |
| 53 | 4.5 | **Efectos 2D** | 13d | 2010-07-01 | 2010-07-15 |  | 14d | 0d |  | Jordi | 128h |
| 54 | 4.5.1 | Menus | 7d | 2010-07-01 | 2010-07-08 |  | 14d | 0d |  |  |  |
| 55 | 4.5.2 | Gui | 3d | 2010-07-09 | 2010-07-12 | 54 | 14d | 0d |  |  |  |
| 56 | 4.5.3 | Scores | 3d | 2010-07-13 | 2010-07-15 | 55 | 14d |  |  | Jordi | 24h |
| 57 | 4.6 | Shaders | 21d | 2010-07-16 | 2010-08-09 | 40 | 14d | 8d |  | Javier | 168h |
| 58 | 4.7 | Camera | 45d | 2010-07-01 | 2010-08-21 |  | 3d |  |  | Javier | 360h |
| 59 | 4.8 | Sonido | 45d | 2010-07-01 | 2010-08-21 |  | 3d |  |  | Jordi | 360h |
| 60 | 4.9 | Gestión Eventos | 45d | 2010-07-01 | 2010-08-21 |  | 3d |  |  | Giorgio | 360h |
| 61 | 4.10 | Multiplayer | 21d | 2010-07-16 | 2010-08-09 | 53 | 14d |  |  | Jordi | 168h |
| 62 | 4.11 | I+D Joystick | 20d | 2010-07-26 | 2010-08-17 | 33 | 7d |  |  | Giorgio | 160h |
| 63 | 5 | **Reuniones de control** | 49d | 2010-07-07 | 2010-09-01 |  | 3d |  |  | Todos | 400h |
| 64 | 5.1 | Reunión de control | 1d | 2010-07-07 | 2010-07-07 |  | 44d |  | start no earlier than 2010-07-07 |  |  |
| 65 | 5.2 | Reunión de control | 1d | 2010-07-14 | 2010-07-14 | 64 | 39d |  | start no earlier than 2010-07-14 |  |  |
| 66 | 5.3 | Reunión de control | 1d | 2010-07-21 | 2010-07-21 | 65 | 34d |  | start no earlier than 2010-07-21 |  |  |
| 67 | 5.4 | Reunión de control | 1d | 2010-07-28 | 2010-07-28 | 66 | 29d |  | start no earlier than 2010-07-28 |  |  |
| 68 | 5.5 | Reunión de control | 1d | 2010-08-04 | 2010-08-04 | 67 | 24d |  | start no earlier than 2010-08-04 |  |  |
| 69 | 5.6 | Reunión de control | 1d | 2010-08-11 | 2010-08-11 | 68 | 19d |  | start no earlier than 2010-08-11 |  |  |
| 70 | 5.7 | Reunión de control | 1d | 2010-08-18 | 2010-08-18 | 69 | 14d | 5d | start no earlier than 2010-08-18 |  |  |
| 71 | 5.8 | Reunión de control | 1d | 2010-08-25 | 2010-08-25 | 70 | 9d |  | start no earlier than 2010-08-25 |  |  |
| 72 | 5.9 | Reunión de control | 1d | 2010-09-01 | 2010-09-01 |  | 3d |  | start no earlier than 2010-09-01 | Todos | 8h |
| 73 | 6 | **Final testing** | 9d | 2010-08-26 | 2010-09-04 | 37 | 0d |  |  | Todos | 88h |
| 74 | 6.1 | Detección de bugs | 4d | 2010-08-26 | 2010-08-30 |  | 0d |  |  |  |  |
| 75 | 6.2 | Pruebas de errores | 3d | 2010-08-31 | 2010-09-02 | 74 | 0d |  |  |  |  |
| 76 | 6.3 | Pruebas unitarias | 2d | 2010-09-03 | 2010-09-04 | 75 | 0d |  |  | Todos | 16h |
